# lab_01.1

Schedule from MS Project, 2023-03-01 to 2023-06-23, costs in ₽.
Длительность: 6 месяцев / Бюджет: 50 000 / Количественный состав команды: 16

## Calendars

- Стандартный: Mon-Fri 09:00-13:00, 14:00-18:00; Sat-Sun off. Exceptions (off unless hours are given): 2023-03-08 (Праздник (Международный женский день)), 2023-05-01 (Праздник (День весны и труда)), 2023-05-08 to 2023-05-09 (Праздник (День Победы)), 2023-06-12 (Праздник (День России)).

## Resources

| Resource | Group | Rate | Cost per use |
| --- | --- | --- | --- |
| Ведущий программист | Программирование | 10 | 100 |
| Программист №1 | Программирование | 7 | 50 |
| Программист №2 | Программирование | 7 | 50 |
| Программист №3 | Программирование | 7 | 50 |
| Программист №4 | Программирование | 7 | 50 |
| Системный аналитик | Анализ | 20 | 300 |
| Художник-дизайнер | Дизайн | 8 | 70 |
| Технический писатель | Документация | 5 | 20 |
| Web-дизайнер | Internet | 7 | 50 |
| 3D-аниматор | Дизайн | 8 | 70 |
| Мультимедиа- корреспондент | М-медиа | 3 | 20 |
| Наборщик данных №1 | Ввод данных | 2 | 10 |
| Наборщик данных №2 | Ввод данных | 2 | 10 |
| Наборщик данных №3 | Ввод данных | 2 | 10 |
| Наборщик данных №4 | Ввод данных | 2 | 10 |
| Наборщик данных №5 | Ввод данных | 2 | 10 |
| Сервер |  | 2 |  |

## Schedule

| ID | WBS | Task | Type | Duration | Start | Finish | Predecessors | Total slack | Free slack | Resources | Work | Cost |
| --- | --- | --- | --- | --- | --- | --- | --- | --- | --- | --- | --- | --- |
| 1 | 1 | Начало проекта | milestone | 0w | 2023-03-01 | 2023-03-01 |  | 17d | 0d |  |  |  |
| 2 | 2 | **Создание интерфейса** |  | 49.17d | 2023-03-01 | 2023-05-15 | 1 | 0.33d |  |  | 440h | 4,710 |
| 3 | 2.1 | **Разработка дизайна интерфейса** |  | 25d | 2023-03-01 | 2023-04-05 |  | 17d | 0d |  | 320h | 2,770 |
| 4 | 2.1.1 | Разработка 2D графических элементов |  | 3w | 2023-03-01 | 2023-03-22 |  | 17d | 0d | Художник-дизайнер | 120h | 1,030 |
| 5 | 2.1.2 | Разработка 3D графических элементов |  | 2w | 2023-03-01 | 2023-03-15 | 4SS | 17d | 0d | 3D-аниматор | 80h | 710 |
| 6 | 2.1.3 | Создание заставки |  | 3w | 2023-03-16 | 2023-04-05 | 5 | 17d |  | 3D-аниматор | 120h | 1,030 |
| 7 | 2.2 | Программирование интерфейса |  | 1.5w | 2023-04-28 | 2023-05-15 | 3, 12 | 0.33d | 0d | Программист №3; Программист №4 | 120h | 940 |
| 8 | 3 | **Построение базы объектов** |  | 77.5d | 2023-03-01 | 2023-06-23 |  | 0d |  | Сервер | 5340h | 14,170 |
| 9 | 3.1 | Анализ и построение структуры базы объектов |  | 2w | 2023-03-01 | 2023-03-15 |  | 0d |  | Системный аналитик | 80h | 1,900 |
| 10 | 3.2 | Программирование средств обработки базы объектов |  | 1.5w | 2023-03-16 | 2023-03-27 | 9 | 0d |  | Программист №3; Программист №4 | 120h | 940 |
| 11 | 3.3 | Наполнение базы объектов |  | 12w | 2023-03-27 | 2023-06-23 | 10 | 0d |  | Наборщик данных №1; Наборщик данных №2; Наборщик данных №3; Наборщик данных №4; Наборщик данных №5 | 2400h | 4,850 |
| 12 | 4 | **Создание ядра GIS** |  | 41.67d | 2023-03-01 | 2023-04-28 |  | 0.33d | 0d |  | 760h | 8,780 |
| 13 | 4.1 | Анализ и проектирование ядра |  | 1.5w | 2023-03-01 | 2023-03-13 |  | 0.33d | 0d | Ведущий программист; Системный аналитик | 120h | 2,200 |
| 14 | 4.2 | Создание модели ядра |  | 2.5w | 2023-03-13 | 2023-03-29 | 13 | 0.33d | 0d | Программист №1; Ведущий программист | 200h | 1,850 |
| 15 | 4.3 | Тестирование модели ядра |  | 1w | 2023-03-30 | 2023-04-05 | 14 | 0.33d | 0d | Программист №1 | 40h | 330 |
| 16 | 4.4 | Создание рабочей версии ядра |  | 3.33w | 2023-04-06 | 2023-04-28 | 15 | 0.33d |  | Программист №1; Программист №2; Ведущий программист | 400h | 3,400 |
| 17 | 5 | Создание мультимедиа – наполнения |  | 6w | 2023-04-06 | 2023-05-22 | 3 | 22.5d |  | Мультимедиа- корреспондент | 240h | 740 |
| 18 | 6 | Создание справочной системы |  | 2w | 2023-05-15 | 2023-05-29 | 7 | 18.33d |  | Технический писатель | 80h | 420 |
| 19 | 7 | **Создание руководства пользователя** |  | 17d | 2023-04-26 | 2023-05-24 | 7FS-10d | 0.33d |  |  | 200h | 1,330 |
| 20 | 7.1 | Разработка дизайна руководства |  | 2w | 2023-04-26 | 2023-05-15 |  | 0.33d | 0d | Художник-дизайнер | 80h | 710 |
| 21 | 7.2 | Написание руководства пользователя |  | 3w | 2023-04-28 | 2023-05-24 | 20SS+2d | 0.33d | 0d | Технический писатель | 120h | 620 |
| 22 | 8 | **Создание web – сайта и поддержка** |  | 21d | 2023-04-28 | 2023-06-01 |  | 0.33d | 0d |  | 248h | 2,106 |
| 23 | 8.1 | Разработка структуры сайта |  | 1d | 2023-04-28 | 2023-05-02 | 21SS | 0.33d | 0d | Web-дизайнер | 8h | 106 |
| 24 | 8.2 | Разработка дизайна сайта |  | 1w | 2023-05-02 | 2023-05-11 | 23 | 0.33d | 0d | Web-дизайнер; 3D-аниматор; Художник-дизайнер | 120h | 1,110 |
| 25 | 8.3 | Наполнение сайта |  | 3w | 2023-05-11 | 2023-06-01 | 24 | 0.33d |  | Web-дизайнер | 120h | 890 |
| 26 | 9 | Тестирование сайта |  | 4w | 2023-05-25 | 2023-06-23 | 22FS-1w | 0.33d | 0d | Ведущий программист; Программист №1; Программист №2 | 480h | 4,040 |
| 27 | 10 | Сдача сайта в эксплуатацию | milestone | 0w | 2023-06-23 | 2023-06-23 | 26 | 0.33d |  |  |  |  |
