# lab_01.1

Schedule from MS Project, 2023-03-01 to 2023-07-18, costs in ₽.
Длительность: 6 месяцев / Бюджет: 50 000 / Количественный состав команды: 16

## Calendars

- Стандартный: Mon-Fri 09:00-13:00, 14:00-18:00; Sat-Sun off. Exceptions (off unless hours are given): 2023-03-08 (Праздник (Международный женский день)), 2023-05-01 (Праздник (День весны и труда)), 2023-05-08 to 2023-05-09 (Праздник (День Победы)), 2023-06-12 (Праздник (День России)).

## Resources

| Resource | Group | Rate | Cost per use |
| --- | --- | --- | --- |
| Ведущий программист | Программирование | 10 | 100 |
| Программист №1 | Программирование | 7 | 50 |
| Программист №2 | Программирование | 7 | 50 |
| Программист №3 | Программирование | 7 | 50 |
| Программист №4 | Программирование | 7 | 50 |
| Системный аналитик | Анализ | 20 | 300 |
| Художник-дизайнер | Дизайн | 8 | 70 |
| Технический писатель | Документация | 5 | 20 |
| Web-дизайнер | Internet | 7 | 50 |
| 3D-аниматор | Дизайн | 8 | 70 |
| Мультимедиа- корреспондент | М-медиа | 3 | 20 |
| Наборщик данных №1 | Ввод данных | 2 | 10 |
| Наборщик данных №2 | Ввод данных | 2 | 10 |
| Наборщик данных №3 | Ввод данных | 2 | 10 |
| Наборщик данных №4 | Ввод данных | 2 | 10 |
| Наборщик данных №5 | Ввод данных | 2 | 10 |
| Сервер |  | 2 |  |

## Schedule

| ID | WBS | Task | Type | Duration | Start | Finish | Predecessors | Baseline start | Baseline finish | Baseline duration | Total slack | Free slack | Resources | Work | Cost | Baseline cost |
| --- | --- | --- | --- | --- | --- | --- | --- | --- | --- | --- | --- | --- | --- | --- | --- | --- |
| 1 | 1 | Начало проекта | milestone | 0w | 2023-03-01 08:00 | 2023-03-01 08:00 |  | 2023-03-01 08:00 | 2023-03-01 08:00 | 0w | 38.46d | 0.12d |  |  |  |  |
| 2 | 2 | **Создание интерфейса** |  | 72.05d | 2023-03-01 10:00 | 2023-06-16 10:23 | 1 | 2023-03-01 10:00 | 2023-06-16 10:23 | 72.05d | 0d |  |  | 560h | 5,650 | 5,650 |
| 3 | 2.1 | **Разработка дизайна интерфейса** |  | 25.5d | 2023-03-01 10:00 | 2023-04-06 15:00 |  | 2023-03-01 10:00 | 2023-04-06 15:00 | 25.5d | 38.33d | 0d |  | 320h | 2,770 | 2,770 |
| 4 | 2.1.1 | Разработка 2D графических элементов |  | 3w | 2023-03-01 10:00 | 2023-03-23 12:00 |  | 2023-03-01 10:00 | 2023-03-23 12:00 | 3w | 38.33d | 0d | Художник-дизайнер | 120h | 1,030 | 1,030 |
| 5 | 2.1.2 | Разработка 3D графических элементов |  | 2w | 2023-03-01 10:00 | 2023-03-16 11:00 | 4SS | 2023-03-01 10:00 | 2023-03-16 11:00 | 2w | 38.33d | 0d | 3D-аниматор | 80h | 710 | 710 |
| 6 | 2.1.3 | Создание заставки |  | 3w | 2023-03-16 12:00 | 2023-04-06 15:00 | 5 | 2023-03-16 12:00 | 2023-04-06 15:00 | 3w | 38.33d |  | 3D-аниматор | 120h | 1,030 | 1,030 |
| 7 | 2.2 | Программирование интерфейса |  | 1.5w | 2023-06-05 15:23 | 2023-06-16 10:23 | 3, 12 | 2023-06-05 15:23 | 2023-06-16 10:23 | 1.5w | 0d |  | Программист №3; Программист №4; Программист №1; Программист №2 | 240h | 1,880 | 1,880 |
| 8 | 3 | **Построение базы объектов** |  | 78.73d | 2023-03-23 14:00 | 2023-07-18 10:49 |  | 2023-03-23 14:00 | 2023-07-18 10:49 | 78.73d | 0.48d |  | Сервер | 5524.82h | 15,239.64 | 15,239.64 |
| 9 | 3.1 | Анализ и построение структуры базы объектов |  | 2w | 2023-03-23 14:00 | 2023-04-06 15:00 |  | 2023-03-23 14:00 | 2023-04-06 15:00 | 2w | 1.38d | 0d | Системный аналитик | 80h | 1,900 | 1,900 |
| 10 | 3.2 | Программирование средств обработки базы объектов |  | 1.5w | 2023-04-07 15:49 | 2023-04-19 10:49 | 9 | 2023-04-07 15:49 | 2023-04-19 10:49 | 1.5w | 0.48d | 0d | Программист №3; Программист №4; Программист №1; Программист №2 | 240h | 1,880 | 1,880 |
| 11 | 3.3 | Наполнение базы объектов |  | 12w | 2023-04-19 10:49 | 2023-07-18 10:49 | 10 | 2023-04-19 10:49 | 2023-07-18 10:49 | 12w | 0.48d |  | Наборщик данных №1; Наборщик данных №2; Наборщик данных №3; Наборщик данных №4; Наборщик данных №5 | 2400h | 4,850 | 4,850 |
| 12 | 4 | **Создание ядра GIS** |  | 64.55d | 2023-03-01 10:00 | 2023-06-05 15:23 |  | 2023-03-01 10:00 | 2023-06-05 15:23 | 64.55d | 0d |  |  | 1880h | 18,229.33 | 18,229.33 |
| 13 | 4.1 | Анализ и проектирование ядра |  | 3.05w | 2023-03-01 10:00 | 2023-03-23 12:00 |  | 2023-03-01 10:00 | 2023-03-23 12:00 | 3.05w | 0d |  | Ведущий программист; Системный аналитик | 240h | 4,000 | 4,000 |
| 14 | 4.2 | Создание модели ядра |  | 2.02w | 2023-03-23 12:00 | 2023-04-06 12:49 | 13 | 2023-03-23 12:00 | 2023-04-06 12:49 | 2.02w | 0d |  | Ведущий программист; Программист №1; Программист №4; Программист №2; Программист №3 | 400h | 3,336.46 | 3,336.46 |
| 15 | 4.3 | Тестирование модели ядра |  | 0.25w | 2023-04-06 12:49 | 2023-04-07 15:49 | 14 | 2023-04-06 12:49 | 2023-04-07 15:49 | 0.25w | 0d |  | Программист №1; Программист №2; Программист №3; Программист №4 | 40h | 480 | 480 |
| 16 | 4.4 | Создание рабочей версии ядра |  | 7.54w | 2023-04-07 15:49 | 2023-06-05 15:23 | 15 | 2023-04-07 15:49 | 2023-06-05 15:23 | 7.54w | 0d |  | Программист №1; Программист №2; Ведущий программист; Программист №3; Программист №4 | 1200h | 9,412.87 | 9,412.87 |
| 17 | 5 | Создание мультимедиа – наполнения |  | 6w | 2023-04-06 15:00 | 2023-05-24 12:00 | 3 | 2023-04-06 15:00 | 2023-05-24 12:00 | 6w | 38.33d |  | Мультимедиа- корреспондент | 240h | 740 | 740 |
| 18 | 6 | Создание справочной системы |  | 2w | 2023-06-27 14:23 | 2023-07-11 15:23 | 7 | 2023-06-27 14:23 | 2023-07-11 15:23 | 2w | 5.04d |  | Технический писатель | 80h | 420 | 420 |
| 19 | 7 | **Создание руководства пользователя** |  | 17.25d | 2023-06-01 10:23 | 2023-06-27 12:23 | 7FS-10d | 2023-06-01 10:23 | 2023-06-27 12:23 | 17.25d | 0d |  |  | 160h | 1,010 | 1,010 |
| 20 | 7.1 | Разработка дизайна руководства |  | 1w | 2023-06-01 10:23 | 2023-06-08 10:23 |  | 2023-06-01 10:23 | 2023-06-08 10:23 | 1w | 0d |  | Художник-дизайнер | 40h | 390 | 390 |
| 21 | 7.2 | Написание руководства пользователя |  | 3w | 2023-06-05 10:23 | 2023-06-27 12:23 | 20SS+2d | 2023-06-05 10:23 | 2023-06-27 12:23 | 3w | 0d |  | Технический писатель | 120h | 620 | 620 |
| 22 | 8 | **Создание web – сайта и поддержка** |  | 23.38d | 2023-06-05 10:23 | 2023-07-07 14:23 |  | 2023-06-05 10:23 | 2023-07-07 14:23 | 23.38d | 0d |  |  | 248h | 2,106 | 2,106 |
| 23 | 8.1 | Разработка структуры сайта |  | 1d | 2023-06-05 10:23 | 2023-06-06 10:23 | 21SS | 2023-06-05 10:23 | 2023-06-06 10:23 | 1d | 0d |  | Web-дизайнер | 8h | 106 | 106 |
| 24 | 8.2 | Разработка дизайна сайта |  | 1.43w | 2023-06-06 10:23 | 2023-06-16 11:23 | 23 | 2023-06-06 10:23 | 2023-06-16 11:23 | 1.43w | 0d |  | 3D-аниматор; Web-дизайнер; Художник-дизайнер | 120h | 1,110 | 1,110 |
| 25 | 8.3 | Наполнение сайта |  | 3w | 2023-06-16 11:23 | 2023-07-07 14:23 | 24 | 2023-06-16 11:23 | 2023-07-07 14:23 | 3w | 0d |  | Web-дизайнер | 120h | 890 | 890 |
| 26 | 9 | Тестирование сайта |  | 2.43w | 2023-06-30 14:23 | 2023-07-18 15:40 | 22FS-1w | 2023-06-30 14:23 | 2023-07-18 15:40 | 2.43w | 0d |  | Ведущий программист; Программист №1; Программист №2; Программист №4; Программист №3 | 480h | 3,945.85 | 3,945.85 |
| 27 | 10 | Сдача сайта в эксплуатацию | milestone | 0w | 2023-07-18 15:40 | 2023-07-18 15:40 | 26 | 2023-07-18 15:40 | 2023-07-18 15:40 | 0w | 0d |  |  |  |  |  |

| ID | WBS | Task | Type | Duration | Start | Finish | Baseline start | Baseline finish | Baseline duration | Total slack | Constraint | Resources | Work | Cost | Baseline cost |
| --- | --- | --- | --- | --- | --- | --- | --- | --- | --- | --- | --- | --- | --- | --- | --- |
| 28 | 11 | **Совещание** |  | 90d | 2023-03-01 08:00 | 2023-07-12 09:00 | 2023-03-01 08:00 | 2023-07-12 09:00 | 90d | 0d |  |  | 140h | 1,220 | 1,220 |
| 29 | 11.1 | Совещание 1 | manual | 1h | 2023-03-01 08:00 | 2023-03-01 09:00 | 2023-03-01 08:00 | 2023-03-01 09:00 | 1h |  | start no earlier than 2023-03-01 08:00 | 3D-аниматор; Мультимедиа- корреспондент; Ведущий программист; Web-дизайнер; Системный аналитик; Технический писатель; Художник-дизайнер | 7h | 61 | 61 |
| 30 | 11.2 | Совещание 2 | manual | 1h | 2023-03-08 08:00 | 2023-03-08 09:00 | 2023-03-08 08:00 | 2023-03-08 09:00 | 1h |  | start no earlier than 2023-03-08 08:00 | 3D-аниматор; Мультимедиа- корреспондент; Ведущий программист; Web-дизайнер; Системный аналитик; Технический писатель; Художник-дизайнер | 7h | 61 | 61 |
| 31 | 11.3 | Совещание 3 | manual | 1h | 2023-03-15 08:00 | 2023-03-15 09:00 | 2023-03-15 08:00 | 2023-03-15 09:00 | 1h |  | start no earlier than 2023-03-15 08:00 | 3D-аниматор; Мультимедиа- корреспондент; Ведущий программист; Web-дизайнер; Системный аналитик; Технический писатель; Художник-дизайнер | 7h | 61 | 61 |
| 32 | 11.4 | Совещание 4 | manual | 1h | 2023-03-22 08:00 | 2023-03-22 09:00 | 2023-03-22 08:00 | 2023-03-22 09:00 | 1h |  | start no earlier than 2023-03-22 08:00 | 3D-аниматор; Мультимедиа- корреспондент; Ведущий программист; Web-дизайнер; Системный аналитик; Технический писатель; Художник-дизайнер | 7h | 61 | 61 |
| 33 | 11.5 | Совещание 5 | manual | 1h | 2023-03-29 08:00 | 2023-03-29 09:00 | 2023-03-29 08:00 | 2023-03-29 09:00 | 1h |  | start no earlier than 2023-03-29 08:00 | 3D-аниматор; Мультимедиа- корреспондент; Ведущий программист; Web-дизайнер; Системный аналитик; Технический писатель; Художник-дизайнер | 7h | 61 | 61 |
| 34 | 11.6 | Совещание 6 | manual | 1h | 2023-04-05 08:00 | 2023-04-05 09:00 | 2023-04-05 08:00 | 2023-04-05 09:00 | 1h |  | start no earlier than 2023-04-05 08:00 | 3D-аниматор; Мультимедиа- корреспондент; Ведущий программист; Web-дизайнер; Системный аналитик; Технический писатель; Художник-дизайнер | 7h | 61 | 61 |
| 35 | 11.7 | Совещание 7 | manual | 1h | 2023-04-12 08:00 | 2023-04-12 09:00 | 2023-04-12 08:00 | 2023-04-12 09:00 | 1h |  | start no earlier than 2023-04-12 08:00 | 3D-аниматор; Мультимедиа- корреспондент; Ведущий программист; Web-дизайнер; Системный аналитик; Технический писатель; Художник-дизайнер | 7h | 61 | 61 |
| 36 | 11.8 | Совещание 8 | manual | 1h | 2023-04-19 08:00 | 2023-04-19 09:00 | 2023-04-19 08:00 | 2023-04-19 09:00 | 1h |  | start no earlier than 2023-04-19 08:00 | 3D-аниматор; Мультимедиа- корреспондент; Ведущий программист; Web-дизайнер; Системный аналитик; Технический писатель; Художник-дизайнер | 7h | 61 | 61 |
| 37 | 11.9 | Совещание 9 | manual | 1h | 2023-04-26 08:00 | 2023-04-26 09:00 | 2023-04-26 08:00 | 2023-04-26 09:00 | 1h |  | start no earlier than 2023-04-26 08:00 | 3D-аниматор; Мультимедиа- корреспондент; Ведущий программист; Web-дизайнер; Системный аналитик; Технический писатель; Художник-дизайнер | 7h | 61 | 61 |
| 38 | 11.10 | Совещание 10 | manual | 1h | 2023-05-03 08:00 | 2023-05-03 09:00 | 2023-05-03 08:00 | 2023-05-03 09:00 | 1h |  | start no earlier than 2023-05-03 08:00 | 3D-аниматор; Мультимедиа- корреспондент; Ведущий программист; Web-дизайнер; Системный аналитик; Технический писатель; Художник-дизайнер | 7h | 61 | 61 |
| 39 | 11.11 | Совещание 11 | manual | 1h | 2023-05-10 08:00 | 2023-05-10 09:00 | 2023-05-10 08:00 | 2023-05-10 09:00 | 1h |  | start no earlier than 2023-05-10 08:00 | 3D-аниматор; Мультимедиа- корреспондент; Ведущий программист; Web-дизайнер; Системный аналитик; Технический писатель; Художник-дизайнер | 7h | 61 | 61 |
| 40 | 11.12 | Совещание 12 | manual | 1h | 2023-05-17 08:00 | 2023-05-17 09:00 | 2023-05-17 08:00 | 2023-05-17 09:00 | 1h |  | start no earlier than 2023-05-17 08:00 | 3D-аниматор; Мультимедиа- корреспондент; Ведущий программист; Web-дизайнер; Системный аналитик; Технический писатель; Художник-дизайнер | 7h | 61 | 61 |
| 41 | 11.13 | Совещание 13 | manual | 1h | 2023-05-24 08:00 | 2023-05-24 09:00 | 2023-05-24 08:00 | 2023-05-24 09:00 | 1h |  | start no earlier than 2023-05-24 08:00 | 3D-аниматор; Мультимедиа- корреспондент; Ведущий программист; Web-дизайнер; Системный аналитик; Технический писатель; Художник-дизайнер | 7h | 61 | 61 |
| 42 | 11.14 | Совещание 14 | manual | 1h | 2023-05-31 08:00 | 2023-05-31 09:00 | 2023-05-31 08:00 | 2023-05-31 09:00 | 1h |  | start no earlier than 2023-05-31 08:00 | 3D-аниматор; Мультимедиа- корреспондент; Ведущий программист; Web-дизайнер; Системный аналитик; Технический писатель; Художник-дизайнер | 7h | 61 | 61 |
| 43 | 11.15 | Совещание 15 | manual | 1h | 2023-06-07 08:00 | 2023-06-07 09:00 | 2023-06-07 08:00 | 2023-06-07 09:00 | 1h |  | start no earlier than 2023-06-07 08:00 | 3D-аниматор; Мультимедиа- корреспондент; Ведущий программист; Web-дизайнер; Системный аналитик; Технический писатель; Художник-дизайнер | 7h | 61 | 61 |
| 44 | 11.16 | Совещание 16 | manual | 1h | 2023-06-14 08:00 | 2023-06-14 09:00 | 2023-06-14 08:00 | 2023-06-14 09:00 | 1h |  | start no earlier than 2023-06-14 08:00 | 3D-аниматор; Мультимедиа- корреспондент; Ведущий программист; Web-дизайнер; Системный аналитик; Технический писатель; Художник-дизайнер | 7h | 61 | 61 |
| 45 | 11.17 | Совещание 17 | manual | 1h | 2023-06-21 08:00 | 2023-06-21 09:00 | 2023-06-21 08:00 | 2023-06-21 09:00 | 1h |  | start no earlier than 2023-06-21 08:00 | 3D-аниматор; Мультимедиа- корреспондент; Ведущий программист; Web-дизайнер; Системный аналитик; Технический писатель; Художник-дизайнер | 7h | 61 | 61 |
| 46 | 11.18 | Совещание 18 | manual | 1h | 2023-06-28 08:00 | 2023-06-28 09:00 | 2023-06-28 08:00 | 2023-06-28 09:00 | 1h |  | start no earlier than 2023-06-28 08:00 | 3D-аниматор; Мультимедиа- корреспондент; Ведущий программист; Web-дизайнер; Системный аналитик; Технический писатель; Художник-дизайнер | 7h | 61 | 61 |
| 47 | 11.19 | Совещание 19 | manual | 1h | 2023-07-05 08:00 | 2023-07-05 09:00 | 2023-07-05 08:00 | 2023-07-05 09:00 | 1h |  | start no earlier than 2023-07-05 08:00 | 3D-аниматор; Мультимедиа- корреспондент; Ведущий программист; Web-дизайнер; Системный аналитик; Технический писатель; Художник-дизайнер | 7h | 61 | 61 |
| 48 | 11.20 | Совещание 20 | manual | 1h | 2023-07-12 08:00 | 2023-07-12 09:00 | 2023-07-12 08:00 | 2023-07-12 09:00 | 1h |  | start no earlier than 2023-07-12 08:00 | 3D-аниматор; Мультимедиа- корреспондент; Ведущий программист; Web-дизайнер; Системный аналитик; Технический писатель; Художник-дизайнер | 7h | 61 | 61 |
