# rk1_10

Schedule from MS Project, 2023-04-03 to 2023-06-28, status date 2023-06-06, costs in ₽, A marks actual dates.

## Calendars

- Стандартный: Mon-Fri 09:00-13:00, 14:00-18:00; Sat-Sun off. Exceptions (off unless hours are given): 2023-05-01 (Первое мая), 2023-05-08 to 2023-05-09 (День Победы), 2023-06-12 (День России).

## Resources

| Resource | Group | Unit | Rate | Cost per use | Notes |
| --- | --- | --- | --- | --- | --- |
| Соколов | Программисты |  | 437.5 |  | Ведущий программист |
| Соломин | Программисты |  | 343.75 |  |  |
| Тимофеев | Программисты |  | 312.5 |  |  |
| Яковлева | Программисты |  | 312.5 |  |  |
| Петров | Дизайнеры |  | 468.75 |  | Руководитель дизайнерской группы |
| Кузнецов | Дизайнеры |  | 312.5 |  |  |
| Фомина | Редактор сайта |  | 250 |  |  |
| Преподаватели | Преподаватели |  | 700 |  |  |
| Программное обеспечение | ПО |  | 30000 | 5000 |  |
| Картриджи для принтера | Расходные материалы |  | 2500 |  |  |
| Бумага | Расходные материалы | пач/мес | 200 |  |  |

## Schedule

| ID | WBS | Task | Type | Duration | Start | Finish | Predecessors | Complete | Remaining | Baseline start | Baseline finish | Baseline duration | Total slack | Free slack | Constraint | Resources | Work | Actual work | Cost | Baseline cost | Actual cost |
| --- | --- | --- | --- | --- | --- | --- | --- | --- | --- | --- | --- | --- | --- | --- | --- | --- | --- | --- | --- | --- | --- |
| 1 | 1 | Начало проекта | milestone | 0d | 2023-04-03 A | 2023-04-03 A |  | 100% |  | 2023-04-03 | 2023-04-03 | 0d |  |  |  |  |  |  |  |  |  |
| 2 | 2 | Установка ПО |  | 15d | 2023-04-04 A | 2023-04-24 A | 1FS+1d | 100% |  | 2023-04-04 | 2023-04-24 | 15d |  |  |  | Соколов; Программное обеспечение | 120h | 120h | 87,500 | 87,500 | 87,500 |
| 3 | 3 | Обучение персонала |  | 29d | 2023-04-18 A | 2023-05-31 A | 2SS+10d | 100% |  | 2023-04-18 | 2023-05-23 | 22.14d |  |  | start no earlier than 2023-04-18 | Преподаватели [300%]; Соломин; Тимофеев; Петров; Кузнецов; Яковлева; Бумага [3 пач/мес]; Картриджи для принтера; Соколов | 1014.86h | 1014.86h | 423,099.79 | 399,100 | 423,099.79 |
| 4 | 4 | **Разработка представительских сайтов** |  | 8d | 2023-05-30 A | 2023-06-09 A | 3 | 100% |  | 2023-05-30 | 2023-06-09 | 8d |  |  |  |  | 104h | 104h | 33,500 | 26,000 | 33,500 |
| 5 | 4.1 | **Разработка сайта 1** |  | 5d | 2023-05-30 A | 2023-06-06 A |  | 100% |  | 2023-05-30 | 2023-06-06 | 5d |  |  |  |  | 40h | 40h | 13,000 | 13,000 | 13,000 |
| 6 | 4.1.1 | Разработка дизайна сайта 1 |  | 2d | 2023-05-30 A | 2023-06-01 A |  | 100% |  | 2023-05-30 | 2023-06-01 | 2d |  |  |  | Кузнецов | 16h | 16h | 5,000 | 5,000 | 5,000 |
| 7 | 4.1.2 | Программирование сайта 1 |  | 3d | 2023-06-01 A | 2023-06-06 A | 6 | 100% |  | 2023-06-01 | 2023-06-06 | 3d |  |  |  | Тимофеев | 24h | 24h | 7,500 | 7,500 | 7,500 |
| 8 | 4.2 | **Разработка сайта 2** |  | 5d | 2023-06-02 A | 2023-06-09 A | 5FS-2d | 100% |  | 2023-06-02 | 2023-06-09 | 5d |  |  |  |  | 64h | 64h | 20,500 | 13,000 | 20,500 |
| 9 | 4.2.1 | Разработка дизайна сайта 2 |  | 5d | 2023-06-02 A | 2023-06-09 A |  | 100% |  | 2023-06-02 | 2023-06-06 | 2d |  |  |  | Кузнецов | 40h | 40h | 12,500 | 5,000 | 12,500 |
| 10 | 4.2.2 | Программирование сайта 2 |  | 3d | 2023-06-06 A | 2023-06-09 A | 9 | 100% |  | 2023-06-06 | 2023-06-09 | 3d |  |  |  | Тимофеев | 24h | 24h | 7,500 | 7,500 | 7,500 |
| 11 | 5 | Представительские сайты созданы | milestone | 0d | 2023-06-09 A | 2023-06-09 A | 4 | 100% |  | 2023-06-09 | 2023-06-09 | 0d |  |  |  |  |  |  |  |  |  |
| 12 | 6 | **Разработка коропоративного сайта** |  | 25d | 2023-05-23 A | 2023-06-28 | 3 | 65% | 8.87d | 2023-05-23 | 2023-06-28 | 25d | 0d |  |  |  | 424h | 284.57h | 137,000 | 137,000 | 92,383.85 |
| 13 | 6.1 | Проектирование сайта |  | 6d | 2023-05-23 A | 2023-06-13 |  | 50% | 3d | 2023-05-23 | 2023-05-30 | 5d | 4d | 0d |  | Кузнецов; Тимофеев | 80h | 48h | 25,000 | 25,000 | 15,000 |
| 14 | 6.2 | Программирование сайта |  | 15d | 2023-05-30 A | 2023-06-21 | 13 | 92% | 1.14d | 2023-05-30 | 2023-06-21 | 15d | 1.86d | 0d |  | Соломин; Яковлева | 240h | 221.71h | 79,750 | 79,750 | 73,669.69 |
| 15 | 6.3 | Наполнение сайта |  | 3d | 2023-06-16 A | 2023-06-21 | 14FS-3d | 62% | 1.14d | 2023-06-16 | 2023-06-21 | 3d | 0d |  |  | Фомина | 24h | 14.86h | 6,000 | 6,000 | 3,714.17 |
| 16 | 6.4 | Тестирование сайта |  | 5d | 2023-06-21 | 2023-06-28 | 15 |  |  | 2023-06-21 | 2023-06-28 | 5d | 0d |  |  | Соломин; Яковлева | 80h |  | 26,250 | 26,250 |  |
| 17 | 7 | Сдача сайта заказчику | milestone | 0d | 2023-06-28 | 2023-06-28 | 16 |  |  | 2023-06-28 | 2023-06-28 | 0d | 0d |  |  |  |  |  |  |  |  |
